# 21-05_Proyecto_final

How a schedule from MS Project changed from version to version. A marks actual dates.

## Version 1 (saved 2014-05-22, file (22-05-14)Proyecto_final.mpp)

Note of the change: Merge branch 'develop' of github.com:fos-alex/estamos-para-ayudarlo into develop

| ID | WBS | Task | Duration | Start | Finish | Predecessors | Complete | Total float | Constraint |
| --- | --- | --- | --- | --- | --- | --- | --- | --- | --- |
| 1 | 1 | **E.P.A Estamos Para Ayudarlo** | 145d | 2014-04-10 A | 2014-10-30 |  |  | 0d |  |
| 2 |  | Investigación del mercado y viabilidad de propuestas | 3d | 2014-04-10 A | 2014-04-14 |  |  | 140d | finish no earlier than 2014-04-14 |
| 3 |  | Definir propuestas | 2d | 2014-04-15 A | 2014-04-16 | 2 |  | 140d | finish no earlier than 2014-04-16 |
| 4 |  | PRESENTACIÓN DE PROPUESTAS ELEGIDAS | 0d | 2014-04-17 A | 2014-04-17 A | 3 | 100% |  | start no earlier than 2014-04-17 |
| 5 |  | Desarrollo propuesta aceptada | 5d | 2014-04-17 A | 2014-04-23 |  |  | 0.75d | finish no earlier than 2014-04-23 |
| 6 |  | PRESENTACIÓN DE PROPUESTA ACEPTADA | 0d | 2014-04-24 A | 2014-04-24 | 5 |  | 0.25d | start no earlier than 2014-04-24 |
| 7 | 1.6 | **Organización inicial** | 15d | 2014-04-25 A | 2014-05-15 |  |  | 119d |  |
| 8 |  | Armar grupo de trabajo | 1d | 2014-04-25 A | 2014-04-25 | 6 |  | 1d | start no earlier than 2014-04-24 |
| 9 |  | Definir nombre de empresa y proyecto | 1d | 2014-04-25 A | 2014-04-25 | 6 |  | 83.75d |  |
| 10 |  | Crear Logo de la Empresa | 3d | 2014-04-28 A | 2014-04-30 | 9 |  | 130d |  |
| 11 |  | Crear Logo de la Proyecto | 3d | 2014-04-28 A | 2014-04-30 | 9 |  | 130d |  |
| 12 |  | Precisar Objetivos, Alcance y Límites | 5d | 2014-04-28 A | 2014-05-02 | 9 |  | 120d | finish no earlier than 2014-05-02 |
| 13 |  | Confeccionar Acta de Proyecto | 12d | 2014-04-28 A | 2014-05-13 | 8, 9 |  | 1d | finish no earlier than 2014-05-13 |
| 14 |  | ACTA DE PROYECTO | 1d | 2014-05-15 A | 2014-05-15 | 13 |  | 82.75d | finish no earlier than 2014-05-15 |
| 15 |  | Estimar tiempos y tareas | 4d | 2014-05-05 | 2014-05-08 | 12 |  | 120d |  |
| 16 |  | Confeccionar Gantt | 4d | 2014-05-09 | 2014-05-14 | 15 |  | 120d | start no earlier than 2014-05-08 |
| 17 |  | GANTT | 0d | 2014-05-15 A | 2014-05-15 | 16 |  | 120d | start no earlier than 2014-05-15 |
| 18 | 1.7 | **Relevamiento** | 10d | 2014-05-16 | 2014-05-29 |  |  | 109d |  |
| 19 |  | Realizar Informe de Estudio de Mercado | 9d | 2014-05-16 | 2014-05-28 | 14 |  | 110d | finish no earlier than 2014-05-21 |
| 20 |  | INFORME DE ESTUDIO DE MERCADO | 0d | 2014-05-29 | 2014-05-29 | 19 |  | 109d | finish no earlier than 2014-05-29 |
| 21 | 1.8 | **Analisis** | 41.25d | 2014-05-09 A | 2014-07-07 |  |  | 82.75d |  |
| 22 |  | Realizar Plan de Ejecución - Entregables | 2d | 2014-05-09 A | 2014-05-12 |  |  | 0d | must start on 2014-05-09 |
| 23 |  | Armar WBS | 6d | 2014-05-21 A | 2014-05-28 |  |  | 21d | finish no earlier than 2014-05-28 |
| 24 |  | WBS | 0d | 2014-05-29 A | 2014-05-29 | 23 |  | 1d |  |
| 25 |  | Elaborar Matriz de Roles y Responsabilidades | 9d | 2014-05-16 A | 2014-05-28 | 14 |  | 91d | finish no earlier than 2014-05-28 |
| 26 |  | MATRIZ DE ROLES Y RESPONSABILIDADES | 0d | 2014-05-29 | 2014-05-29 | 25 |  | 90d | finish no earlier than 2014-05-29 |
| 27 |  | Elaborar Matriz Asignacion de Responsabilidades | 9d | 2014-05-16 A | 2014-05-28 | 14 |  | 91d | finish no earlier than 2014-05-28 |
| 28 |  | MATRIZ DE ASIGNACION DE RESPONSABILIDADES | 0d | 2014-05-29 A | 2014-05-29 | 27 |  | 91d |  |
| 29 |  | Elaborar Matriz de Comunicaciones | 9d | 2014-05-16 A | 2014-05-28 | 14 |  | 110d | finish no earlier than 2014-05-28 |
| 30 |  | MATRIZ DE COMUNICACIONES | 0d | 2014-05-29 A | 2014-05-29 A | 29 | 100% |  | finish no earlier than 2014-05-29 |
| 31 |  | Analizar Riesgos Potenciales | 13.25d | 2014-05-16 A | 2014-06-04 | 14 |  | 105.75d | finish no earlier than 2014-05-28 |
| 32 |  | INFORME DE ANÁLISIS DE RIESGOS | 0d | 2014-05-29 A | 2014-05-29 A | 31 | 100% |  | finish no earlier than 2014-05-29 |
| 33 |  | Armar informe de Estimacion de Costos | 8.25d | 2014-05-16 A | 2014-05-28 | 14 |  | 82.75d | finish no earlier than 2014-05-21 |
| 34 |  | ESTIMACIÓN DE COSTOS | 0d | 2014-05-22 A | 2014-05-28 | 33 |  | 82.75d |  |
| 35 |  | Efectuar estudio de Factibiliad Técnica, Operativa y Económica | 9d | 2014-05-23 A | 2014-06-10 | 34 |  | 82.75d | finish no earlier than 2014-06-04 |
| 36 |  | DOCUMENTO DE FACTIBILIDAD ECONÓMICA, TÉCNICA Y OPERATIVA | 0d | 2014-06-05 A | 2014-06-10 | 35 |  | 82.75d |  |
| 37 |  | Armar Plan General de Proyecto | 19d | 2014-06-06 A | 2014-07-07 | 24, 26, 28, 30, 32, 34, 36 |  | 82.75d | finish no earlier than 2014-06-11 |
| 38 |  | PLAN GENERAL DE PROYECTO | 0d | 2014-07-07 | 2014-07-07 | 37 |  | 82.75d | finish no earlier than 2014-07-03 |
| 39 | 1.9 | **Armado de Presentación** | 79d | 2014-05-16 A | 2014-09-04 |  |  | 40d |  |
| 40 | 1.9.1 | **Poster** | 19d | 2014-05-16 A | 2014-06-12 |  |  | 41d |  |
| 41 |  | Analizar contenido | 4d | 2014-05-16 A | 2014-05-21 |  |  | 41d | finish no earlier than 2014-05-21 |
| 42 |  | Armar Poster | 15d | 2014-05-22 A | 2014-06-11 | 41 |  | 41d | finish no earlier than 2014-06-11 |
| 43 |  | POSTER | 0d | 2014-06-12 A | 2014-06-12 | 42 |  | 40d | start no earlier than 2014-06-12 |
| 44 | 1.9.2 | **Comercial** | 59d | 2014-06-13 A | 2014-09-04 | 43 |  | 40d |  |
| 45 |  | Definir estrategia de Marketing | 6d | 2014-06-13 A | 2014-06-20 | 43 |  | 39d | finish no earlier than 2014-06-20 |
| 46 |  | Armar Diapositivas | 14d | 2014-06-23 A | 2014-07-10 | 45 |  | 39d | finish no earlier than 2014-07-10 |
| 47 |  | Armar folletería, carpetas y/o material de apoyo | 14d | 2014-06-23 A | 2014-07-10 | 45 |  | 39d | finish no earlier than 2014-07-10 |
| 48 |  | Definir Merchandising | 14d | 2014-06-23 A | 2014-07-10 | 45 |  | 39d | finish no earlier than 2014-07-10 |
| 49 |  | PRESENTACION COMERCIAL | 0d | 2014-09-04 A | 2014-09-04 | 46, 47, 48 |  | 40d | start no earlier than 2014-09-04 |
| 50 | 1.10 | **Ejecucion del Proyecto** | 107d | 2014-05-29 | 2014-10-27 | 24 |  | 3d |  |
| 51 | 1.10.1 | **Diseño y Desarrollo** | 107d | 2014-05-29 | 2014-10-27 |  |  | 3d |  |
| 52 |  | Especificar arquitectura para el proyecto | 5d | 2014-05-29 | 2014-06-04 | 24 |  | 105d | start no earlier than 2014-05-29 |
| 53 |  | DIAGRAMA DE ARQUITECTURA | 0d | 2014-06-05 | 2014-06-05 | 52 |  | 104d | finish no earlier than 2014-06-05 |
| 54 |  | Realizar DER | 89d | 2014-06-10 | 2014-10-10 |  |  | 13d | finish no earlier than 2014-10-10 |
| 55 |  | DER | 0d | 2014-10-16 | 2014-10-16 | 54 |  | 9d | finish no earlier than 2014-10-16 |
| 56 |  | Realizar Diccionario de Datos | 8d | 2014-10-06 | 2014-10-15 |  |  | 10d | start no earlier than 2014-10-06 |
| 57 |  | DICCIONARIO DE DATOS | 0d | 2014-10-16 | 2014-10-16 | 56 |  | 9d | finish no earlier than 2014-10-16 |
| 58 |  | Realizar Diagrama de Clases | 89d | 2014-06-10 | 2014-10-10 |  |  | 13d | finish no earlier than 2014-10-10 |
| 59 |  | DIAGRAMA DE CLASES | 0d | 2014-10-16 | 2014-10-16 | 58 |  | 10d | start no earlier than 2014-10-16 |
| 60 | 1.10.1.9 | **Desarrollo Web** | 33d | 2014-05-29 | 2014-07-14 |  |  | 77d |  |
| 61 | 1.10.1.9.1 | **Login Web** | 6d | 2014-05-29 | 2014-06-05 |  |  | 104d |  |
| 62 |  | Especificar caso de uso Login Web | 2d | 2014-05-29 | 2014-05-30 |  |  | 108d | finish no earlier than 2014-05-30 |
| 63 |  | Desarrollar Login Web | 3d | 2014-05-30 | 2014-06-03 |  |  | 105d | finish no earlier than 2014-06-03 |
| 64 |  | Testing | 1d | 2014-06-04 | 2014-06-04 | 63 |  | 105d |  |
| 65 |  | LOGIN WEB | 0d | 2014-06-05 | 2014-06-05 | 64 |  | 104d | finish no earlier than 2014-06-05 |
| 66 | 1.10.1.9.2 | **Modulo Productos** | 14d | 2014-06-02 | 2014-06-19 |  |  | 94d |  |
| 67 |  | Especificar caso de uso Productos | 3d | 2014-06-02 | 2014-06-04 |  |  | 105d | finish no earlier than 2014-06-04 |
| 68 |  | Desarrollar ABM Productos | 8d | 2014-06-04 | 2014-06-13 |  |  | 95d | finish no earlier than 2014-06-13 |
| 69 |  | Testing | 3d | 2014-06-16 | 2014-06-18 | 68 |  | 95d | start no earlier than 2014-06-16 |
| 70 |  | ABM PRODUCTOS | 0d | 2014-06-19 | 2014-06-19 | 69 |  | 94d | finish no earlier than 2014-06-19 |

| ID | WBS | Task | Duration | Start | Finish | Predecessors | Total float | Constraint |
| --- | --- | --- | --- | --- | --- | --- | --- | --- |
| 71 | 1.10.1.9.3 | **Modulo Promociones** | 11d | 2014-06-05 | 2014-06-19 |  | 94d |  |
| 72 |  | Especificar caso de uso Promociones | 3d | 2014-06-05 | 2014-06-09 |  | 102d | finish no earlier than 2014-06-09 |
| 73 |  | Desarrollar ABM Promociones | 5d | 2014-06-09 | 2014-06-13 |  | 95d | finish no earlier than 2014-06-13 |
| 74 |  | Testing | 3d | 2014-06-16 | 2014-06-18 | 73 | 95d | finish no earlier than 2014-06-18 |
| 75 |  | ABM PROMOCIONES | 0d | 2014-06-19 | 2014-06-19 | 74 | 94d | finish no earlier than 2014-06-19 |
| 76 | 1.10.1.9.4 | **Modulo Mapas** | 26d | 2014-06-09 | 2014-07-14 |  | 77d |  |
| 77 |  | Investigar tecnologías a utilizar | 3d | 2014-06-20 | 2014-06-24 |  | 91d | finish no earlier than 2014-06-24 |
| 78 |  | Especificar caso de uso Mapas | 4d | 2014-06-09 | 2014-06-12 |  | 88d | finish no earlier than 2014-06-12 |
| 79 |  | Desarrollar ABM Mapas | 11d | 2014-06-13 | 2014-06-27 | 78 | 88d | finish no earlier than 2014-06-27 |
| 80 |  | Testing | 4d | 2014-06-24 | 2014-06-27 |  | 83d | finish no earlier than 2014-06-27 |
| 81 |  | ABM MAPAS | 0d | 2014-06-30 | 2014-06-30 | 80 | 82d | finish no earlier than 2014-06-30 |
| 82 |  | Asignar Productos a Mapas | 5d | 2014-07-07 | 2014-07-11 | 81 | 78d | start no earlier than 2014-07-07 |
| 83 |  | Testing | 2d | 2014-07-10 | 2014-07-11 |  | 78d | finish no earlier than 2014-07-11 |
| 84 |  | MAPA CON PRODUCTOS | 0d | 2014-07-14 | 2014-07-14 | 83 | 77d | finish no earlier than 2014-07-14 |
| 85 | 1.10.1.10 | **Desarrollo Mobile** | 103d | 2014-06-04 | 2014-10-27 |  | 3d |  |
| 86 |  | Investigar Frameworks a utilizar | 11d | 2014-06-04 | 2014-06-18 |  | 95d | finish no earlier than 2014-06-18 |
| 87 | 1.10.1.10.2 | **Configuracion Inicial** | 17d | 2014-06-19 | 2014-07-11 |  | 78d |  |
| 88 |  | Configuracion Inicial Servidores | 7d | 2014-06-19 | 2014-06-27 |  | 78d | finish no earlier than 2014-06-27 |
| 89 |  | Administracion Servidores | 10d | 2014-06-30 | 2014-07-11 | 88 | 78d | finish no earlier than 2014-07-11 |
| 90 | 1.10.1.10.3 | **Login Mobile** | 24d | 2014-06-09 | 2014-07-10 |  | 79d |  |
| 91 |  | Especificar caso de uso Login Mobile/Facebook | 5d | 2014-06-09 | 2014-06-13 |  | 92d | start no earlier than 2014-06-09 |
| 92 |  | Desarrollar Login Mobile | 5d | 2014-06-20 | 2014-06-26 | 91 | 88d | finish no earlier than 2014-06-26 |
| 93 |  | Testing | 1d | 2014-06-27 | 2014-06-27 | 92 | 88d | finish no earlier than 2014-06-27 |
| 94 |  | LOGIN MOBILE | 0d | 2014-06-30 | 2014-06-30 | 93 | 87d | finish no earlier than 2014-06-30 |
| 95 |  | Investigar Login Facebook | 3d | 2014-06-30 | 2014-07-02 |  | 80d | start no earlier than 2014-06-30 |
| 96 |  | Desarrollar Login Facebook | 4d | 2014-07-03 | 2014-07-08 | 95 | 80d | finish no earlier than 2014-07-08 |
| 97 |  | Testing | 1d | 2014-07-09 | 2014-07-09 | 96 | 80d | finish no earlier than 2014-07-09 |
| 98 |  | LOGIN FACEBOOK | 0d | 2014-07-10 | 2014-07-10 | 97 | 79d | finish no earlier than 2014-07-10 |
| 99 | 1.10.1.10.4 | **Modulo Listas de Compras** | 27d | 2014-06-26 | 2014-08-01 |  | 63d |  |
| 100 |  | Especificar caso de uso Listas de compras | 6d | 2014-06-26 | 2014-07-03 |  | 72d | start no earlier than 2014-06-26 |
| 101 |  | Desarrollar ABM Listas | 6d | 2014-07-11 | 2014-07-18 | 100 | 67d | finish no earlier than 2014-07-18 |
| 102 |  | Testing | 1d | 2014-07-21 | 2014-07-21 | 101 | 72d | start no earlier than 2014-07-21 |
| 103 |  | Compartir listas | 5d | 2014-07-21 | 2014-07-25 | 101 | 67d | start no earlier than 2014-07-21 |
| 104 |  | Listas recurrentes | 3d | 2014-07-28 | 2014-07-30 | 101 | 64d | finish no earlier than 2014-07-30 |
| 105 |  | Testing | 1d | 2014-07-31 | 2014-07-31 | 103, 104 | 64d |  |
| 106 |  | ABM LISTAS | 0d | 2014-08-01 | 2014-08-01 | 105 | 63d | finish no earlier than 2014-08-01 |
| 107 | 1.10.1.10.5 | **Modulo Compras** | 25d | 2014-07-07 | 2014-08-11 |  | 58d |  |
| 108 |  | Especificar caso de uso compras | 5d | 2014-07-07 | 2014-07-11 |  | 68d | start no earlier than 2014-07-07 |
| 109 |  | Modo compras | 4d | 2014-07-14 | 2014-07-17 | 108 | 68d | finish no earlier than 2014-07-17 |
| 110 |  | Compra on-demand | 2d | 2014-07-18 | 2014-07-21 | 109 | 68d | finish no earlier than 2014-07-21 |
| 111 |  | Precios cuidados | 4d | 2014-07-22 | 2014-07-25 | 110 | 68d | finish no earlier than 2014-07-25 |
| 112 |  | Testing | 2d | 2014-07-25 | 2014-07-28 |  | 67d | finish no earlier than 2014-07-28 |
| 113 |  | Investigar lectura QR | 2d | 2014-07-25 | 2014-07-28 |  | 63d | finish no earlier than 2014-07-28 |
| 114 |  | Desarollar Lector de productos QR | 3d | 2014-07-29 | 2014-07-31 | 113 | 63d | finish no earlier than 2014-07-31 |
| 115 |  | Testing | 1d | 2014-08-01 | 2014-08-01 | 114 | 63d | start no earlier than 2014-08-01 |
| 116 |  | LECTOR DE PRODUCTOS QR | 0d | 2014-08-04 | 2014-08-04 | 115 | 63d | start no earlier than 2014-08-04 |
| 117 |  | Investigar lectura NFC | 2d | 2014-08-01 | 2014-08-04 |  | 58d | finish no earlier than 2014-08-04 |
| 118 |  | Desarollar Lector de productos NFC | 3d | 2014-08-05 | 2014-08-07 | 117 | 58d | finish no earlier than 2014-08-07 |
| 119 |  | Testing | 1d | 2014-08-08 | 2014-08-08 | 118 | 58d | start no earlier than 2014-08-08 |
| 120 |  | LECTOR DE PRODUCTOS NFC | 0d | 2014-08-11 | 2014-08-11 | 119 | 58d | start no earlier than 2014-08-11 |
| 121 | 1.10.1.10.6 | **Modulo Navegación** | 23d | 2014-07-23 | 2014-08-25 |  | 48d |  |
| 122 |  | Especificar caso de uso navegacion | 8d | 2014-07-23 | 2014-08-01 |  | 49d | start no earlier than 2014-07-23 |
| 123 |  | Recorrido de compras | 5d | 2014-08-04 | 2014-08-08 | 122 | 49d | finish no earlier than 2014-08-08 |
| 124 |  | Navegación a producto/categoría | 3d | 2014-08-11 | 2014-08-13 | 123 | 49d | finish no earlier than 2014-08-13 |
| 125 |  | Localizacion de usuario | 3d | 2014-08-14 | 2014-08-18 | 124 | 49d | finish no earlier than 2014-08-18 |
| 126 |  | Modificacion online recorrido | 3d | 2014-08-19 | 2014-08-21 | 125 | 49d | finish no earlier than 2014-08-21 |
| 127 |  | Testing | 7d | 2014-08-14 | 2014-08-22 | 123 | 48d | finish no earlier than 2014-08-22 |
| 128 |  | MODULO NAVEGACION | 0d | 2014-08-25 | 2014-08-25 | 127 | 48d | start no earlier than 2014-08-25 |
| 129 | 1.10.1.10.7 | **Modulo Notificaciones** | 19d | 2014-08-04 | 2014-08-28 |  | 44d |  |
| 130 |  | Especificar caso de uso notificaciones | 5d | 2014-08-04 | 2014-08-08 |  | 58d | start no earlier than 2014-08-04 |
| 131 |  | Investigar teconología GPS | 3d | 2014-08-13 | 2014-08-15 |  | 45d | finish no earlier than 2014-08-15 |
| 132 |  | Notificacion cercania | 5d | 2014-08-18 | 2014-08-22 | 131 | 45d | finish no earlier than 2014-08-22 |
| 133 |  | Notificar promociones | 3d | 2014-08-25 | 2014-08-27 | 132 | 45d | finish no earlier than 2014-08-27 |
| 134 |  | Testing | 5d | 2014-08-22 | 2014-08-28 |  | 44d | finish no earlier than 2014-08-28 |
| 135 |  | MODULO NOTIFICACIONES | 0d | 2014-08-28 | 2014-08-28 | 134 | 44d |  |
| 136 | 1.10.1.10.8 | **Modulo Estadísticas** | 29d | 2014-08-18 | 2014-09-26 |  | 24d |  |
| 137 |  | Especificar casos de uso estadisticas | 5d | 2014-08-18 | 2014-08-22 |  | 42d | start no earlier than 2014-08-18 |
| 138 |  | Investigación gráficos/estadísticas | 3d | 2014-08-26 | 2014-08-28 |  | 44d | start no earlier than 2014-08-26 |
| 139 |  | Desarrollar Historial de Productos | 6d | 2014-08-29 | 2014-09-05 | 137 | 38d | finish no earlier than 2014-09-05 |
| 140 |  | Testing | 3d | 2014-09-03 | 2014-09-05 |  | 25d | start no earlier than 2014-09-03 |

| ID | WBS | Task | Duration | Start | Finish | Predecessors | Total float | Constraint |
| --- | --- | --- | --- | --- | --- | --- | --- | --- |
| 141 |  | HISTORIAL DE PRODUCTOS | 0d | 2014-09-08 | 2014-09-08 | 140 | 25d | start no earlier than 2014-09-08 |
| 142 |  | Desarrollar Historial de Precios | 8d | 2014-09-09 | 2014-09-18 | 141 | 24d | finish no earlier than 2014-09-18 |
| 143 |  | Testing | 5d | 2014-09-19 | 2014-09-25 | 142 | 24d | finish no earlier than 2014-09-19 |
| 144 |  | HISTORIAL DE PRECIOS | 0d | 2014-09-26 | 2014-09-26 | 143 | 24d | start no earlier than 2014-09-26 |
| 145 | 1.10.1.10.9 | **Gestion de mapas** | 23d | 2014-08-18 | 2014-09-18 |  | 30d |  |
| 146 |  | Especificar caso de uso Gestion de mapas | 5d | 2014-08-18 | 2014-08-22 |  | 42d | finish no earlier than 2014-08-22 |
| 147 |  | Descargar mapa | 6d | 2014-08-29 | 2014-09-05 | 146 | 38d | finish no earlier than 2014-09-05 |
| 148 |  | Actualizar mapa | 5d | 2014-09-08 | 2014-09-12 | 146 | 33d | finish no earlier than 2014-09-12 |
| 149 |  | Borrar mapa | 2d | 2014-09-15 | 2014-09-16 | 146 | 31d | finish no earlier than 2014-09-16 |
| 150 |  | Testing | 8d | 2014-09-08 | 2014-09-17 |  | 30d | finish no earlier than 2014-09-17 |
| 151 |  | GESTION DE MAPAS | 0d | 2014-09-18 | 2014-09-18 | 150 | 30d | start no earlier than 2014-09-18 |
| 152 | 1.10.1.10.10 | **Modulo Operacion por voz** | 30d | 2014-09-15 | 2014-10-27 |  | 3d |  |
| 153 |  | Especifar casos de uso operación por voz | 5d | 2014-09-15 | 2014-09-19 |  | 28d | start no earlier than 2014-09-15 |
| 154 |  | Investigar API Google | 2d | 2014-09-22 | 2014-09-23 |  | 16d | finish no earlier than 2014-09-23 |
| 155 |  | Investigacion parseo de textos | 3d | 2014-09-24 | 2014-09-26 |  | 13d | finish no earlier than 2014-09-26 |
| 156 |  | Compras por voz | 10d | 2014-09-29 | 2014-10-10 | 154, 155 | 13d | finish no earlier than 2014-10-10 |
| 157 |  | Testing | 6d | 2014-10-06 | 2014-10-13 |  | 12d | finish no earlier than 2014-10-13 |
| 158 |  | Listas por voz | 10d | 2014-10-13 | 2014-10-24 | 154, 155 | 3d | finish no earlier than 2014-10-24 |
| 159 |  | Testing | 5d | 2014-10-20 | 2014-10-24 |  | 3d | finish no earlier than 2014-10-24 |
| 160 |  | OPERACIÓN POR VOZ | 0d | 2014-10-27 | 2014-10-27 |  | 3d | start no earlier than 2014-10-27 |
| 161 | 1.10.1.10.11 | **Gestion TAGS** | 15d | 2014-10-06 | 2014-10-27 |  | 3d |  |
| 162 |  | Administrar TAGS supermercados | 10d | 2014-10-06 | 2014-10-17 |  | 3d | finish no earlier than 2014-10-17 |
| 163 |  | Testing | 5d | 2014-10-20 | 2014-10-24 | 162 | 3d | finish no earlier than 2014-10-24 |
| 164 |  | GESTION TAGS | 0d | 2014-10-27 | 2014-10-27 | 163 | 3d | start no earlier than 2014-10-27 |
| 165 | 1.10.2 | **Implementacion** | 6d | 2014-10-15 | 2014-10-23 |  | 5d |  |
| 166 |  | Elaborar manual de usuario para el supermercado | 6d | 2014-10-15 | 2014-10-22 |  | 5d | start no earlier than 2014-10-15 |
| 167 |  | MANUAL DE USUARIO | 0d | 2014-10-23 | 2014-10-23 | 166 | 5d | start no earlier than 2014-10-23 |
| 168 | 1.11 | **Seguimiento y Control del Proyecto** | 124d | 2014-05-09 | 2014-10-30 |  | 0d |  |
| 169 |  | Controlar Hitos del proyecto | 122d | 2014-05-09 | 2014-10-27 |  | 2d | finish no earlier than 2014-10-27 |
| 170 |  | Controlar Entregables del Proyecto | 122d | 2014-05-09 | 2014-10-27 |  | 2d | finish no earlier than 2014-10-27 |
| 171 |  | Controlar Desvíos del Proyecto | 108d | 2014-05-29 | 2014-10-27 |  | 2d | finish no earlier than 2014-10-27 |
| 172 |  | INFORMES DE AVANCE | 0d | 2014-10-30 | 2014-10-30 |  | 0d | start no earlier than 2014-10-30 |
| 173 | 1.12 | **Cierre del Proyecto** | 4d | 2014-10-24 | 2014-10-30 |  | 0d |  |
| 174 |  | Realizar ajustes en la documentación final | 4d | 2014-10-24 | 2014-10-29 |  | 0d | start no earlier than 2014-10-24 |
| 175 |  | Presentacion final del producto | 0d | 2014-10-30 | 2014-10-30 |  | 0d | start no earlier than 2014-10-30 |
| 176 |  | Confeccionar Acta de Cierre de proyecto | 4d | 2014-10-24 | 2014-10-29 |  | 0d | start no earlier than 2014-10-24 |
| 177 |  | ACTA DE CIERRE DE PROYECTO | 0d | 2014-10-30 | 2014-10-30 |  | 0d | start no earlier than 2014-10-30 |
| 178 |  | Armar documento de Lecciones Aprendidas | 4d | 2014-10-24 | 2014-10-29 |  | 0d | start no earlier than 2014-10-24 |
| 179 |  | DOCUMENTO DE LECCIONES APRENDIDAS | 0d | 2014-10-30 | 2014-10-30 |  | 0d | start no earlier than 2014-10-30 |

## Version 2 (saved 2014-05-29, file (29-05-14)Proyecto_final.mpp)

Note of the change: Se sube el Gantt en formato project y formato PDF con arreglos menores en verbos de tareas

Last finish stays 2014-10-30. Complete tasks 3 → 5.

Changed:

| ID | Task | Start | Finish | Duration | Complete | Total float | Predecessors | Other |
| --- | --- | --- | --- | --- | --- | --- | --- | --- |
| 8 | Definir grupo de trabajo |  |  |  |  | 1d → 121d |  | was named Armar grupo de trabajo |
| 14 | ACTA DE PROYECTO |  | 2014-05-15 A | 1d → 0d | 0% → 100% | 82.75d → none |  |  |
| 21 | **Analisis** |  | 2014-07-07 → 2014-07-10 (+3d) | 41.25d → 44d |  | 82.75d → 80d |  |  |
| 23 | Confeccionar WBS |  |  |  |  |  |  | was named Armar WBS |
| 31 | Analizar Riesgos Potenciales |  | 2014-06-04 → 2014-05-28 (-7d) | 13.25d → 9d |  | 105.75d → 110d |  |  |
| 33 | Armar informe de Estimacion de Costos |  |  | 8.25d → 9d |  | 82.75d → 110d |  |  |
| 34 | ESTIMACIÓN DE COSTOS | 2014-05-22 A → 2014-05-29 A (+7d) | 2014-05-28 → 2014-05-29 A (+1d) |  | 0% → 100% | 82.75d → none |  | constraint none → finish no earlier than 2014-05-29 |
| 35 | Efectuar estudio de Factibiliad Técnica, Operativa y Económica | 2014-05-23 A → 2014-05-30 A (+7d) | 2014-06-10 → 2014-06-04 (-6d) | 9d → 4d |  | 82.75d → 105d |  |  |
| 36 | DOCUMENTO DE FACTIBILIDAD ECONÓMICA, TÉCNICA Y OPERATIVA | 2014-06-05 A → 2014-06-05 | 2014-06-10 → 2014-06-05 (-5d) |  |  | 82.75d → 105d |  | constraint none → start no earlier than 2014-06-05 |
| 37 | Armar Plan General de Proyecto | 2014-06-06 A → 2014-06-06 | 2014-07-07 → 2014-07-09 (+2d) | 19d → 24d |  | 82.75d → 80d | 24, 26, 28, 30, 32, 34, 36 → 24, 26, 28, 30, 32, 34 | constraint finish no earlier than 2014-06-11 → finish no earlier than 2014-07-09 |
| 38 | PLAN GENERAL DE PROYECTO | 2014-07-07 → 2014-07-10 (+3d) | 2014-07-07 → 2014-07-10 (+3d) |  |  | 82.75d → 80d |  | constraint finish no earlier than 2014-07-03 → start no earlier than 2014-07-10 |
| 42 | Confeccionar Poster |  |  |  |  |  |  | was named Armar Poster |
| 46 | Realizar Diapositivas |  |  |  |  | 39d → 79d |  | was named Armar Diapositivas |
| 47 | Preparar folletería, carpetas y/o material de apoyo |  |  |  |  | 39d → 79d |  | was named Armar folletería, carpetas y/o material de apoyo |

## Version 3 (saved 2014-07-03, file (03-07-14)Proyecto_final.mpp)

Note of the change: Se sube el Gantt con ajustes para la entrega del 10 pero sin fechas definitivas

Last finish stays 2014-10-30. Complete tasks 5 → 3.

Added:

| ID | Task | Duration | Start | Finish | Predecessors |
| --- | --- | --- | --- | --- | --- |
| 37 | Especificar caso de uso Login Web | 1d? | 2014-06-10 | 2014-06-11 | 36 |
| 38 | CASO DE USO LOGIN WEB | 1d? | 2014-06-11 | 2014-06-12 | 37 |
| 39 | Especificar caso de uso Productos | 1d? | 2014-06-12 | 2014-06-13 | 38 |
| 40 | CASO DE USO ABM PRODUCTOS | 1d? | 2014-06-13 | 2014-06-16 | 39 |
| 41 | Especificar caso de uso Promociones | 1d? | 2014-06-16 | 2014-06-17 | 40 |
| 42 | CASO DE USO ABM PROMOCIONES | 1d? | 2014-06-17 | 2014-06-18 | 41 |
| 43 | Especificar caso de uso Mapas | 1d? | 2014-06-18 | 2014-06-19 | 42 |
| 44 | CASO DE USO MAPAS | 1d? | 2014-06-19 | 2014-06-20 | 43 |
| 45 | Especificar caso de uso Login Mobile/Facebook | 1d? | 2014-06-20 | 2014-06-23 | 44 |
| 46 | CASO DE USO LOGIN MOBILE | 1d? | 2014-06-23 | 2014-06-24 | 45 |
| 47 | Especificar caso de uso Listas de compras | 1d? | 2014-06-24 | 2014-06-25 | 46 |
| 48 | CASO DE USO ABM LISTAS DE COMPRAS | 1d? | 2014-06-25 | 2014-06-26 | 47 |
| 49 | Especificar caso de uso compartir Listas de compras | 1d? | 2014-06-26 | 2014-06-27 | 48 |
| 50 | CASO DE USO COMPARTIR LISTAS DE COMPRAS | 1d? | 2014-06-27 | 2014-06-30 | 49 |
| 51 | Especificar caso de uso compras | 1d? | 2014-06-30 | 2014-07-01 | 50 |
| 52 | CASO DE USO COMPRAR | 1d? | 2014-07-01 | 2014-07-02 | 51 |
| 53 | Especificar caso de uso navegacion | 1d? | 2014-07-02 | 2014-07-03 | 52 |
| 54 | CASO DE USO NAVEGAR | 1d? | 2014-07-03 | 2014-07-04 | 53 |
| 55 | Especificar caso de uso notificaciones | 1d? | 2014-07-04 | 2014-07-07 | 54 |
| 56 | CASO DE USO NOTIFICACIONES | 1d? | 2014-07-07 | 2014-07-08 | 55 |
| 57 | Especificar caso de uso Gestion de mapas | 1d? | 2014-07-08 | 2014-07-09 | 56 |
| 58 | CASO DE USO GESTIONAR MAPAS | 1d? | 2014-07-09 | 2014-07-10 | 57 |
| 59 | Especificar casos de uso estadisticas | 1d? | 2014-07-10 | 2014-07-11 | 58 |
| 60 | CASO DE USO MOSTRAR ESTADISTICAS | 1d? | 2014-07-11 | 2014-07-14 | 59 |
| 61 | Especifar casos de uso operación por voz | 1d? | 2014-07-14 | 2014-07-15 | 60 |
| 62 | CASO DE USO MODOS DE OPERACIÓN | 1d? | 2014-07-15 | 2014-07-16 | 61 |

Changed:

| ID | Task | Start | Finish | Duration | Complete | Total float | Predecessors | Other |
| --- | --- | --- | --- | --- | --- | --- | --- | --- |
| 1 | **E.P.A Estamos Para Ayudarlo** |  |  | 145d → 145d? |  |  |  |  |
| 8 | Armar grupo de trabajo |  |  |  |  | 121d → 1d |  | was named Definir grupo de trabajo |
| 14 | ACTA DE PROYECTO |  | 2014-05-15 A → 2014-05-15 | 0d → 1d | 100% → 0% | none → 82.75d |  |  |
| 21 | **Analisis** |  | 2014-07-10 → 2014-08-12 (+33d) | 44d → 67.25d? |  | 80d → 56.75d |  |  |
| 23 | Armar WBS |  |  |  |  |  |  | was named Confeccionar WBS |
| 31 | Analizar Riesgos Potenciales |  | 2014-05-28 → 2014-06-04 (+7d) | 9d → 13.25d |  | 110d → 105.75d |  |  |
| 33 | Armar informe de Estimacion de Costos |  |  | 9d → 8.25d |  | 110d → 82.75d |  |  |
| 34 | ESTIMACIÓN DE COSTOS | 2014-05-29 A → 2014-05-22 A (-7d) | 2014-05-29 A → 2014-05-28 (-1d) |  | 100% → 0% | none → 82.75d |  | constraint finish no earlier than 2014-05-29 → none |
| 35 | Efectuar estudio de Factibiliad Técnica, Operativa y Económica | 2014-05-30 A → 2014-05-23 A (-7d) | 2014-06-04 → 2014-06-10 (+6d) | 4d → 9d |  | 105d → 56.75d |  |  |
| 36 | DOCUMENTO DE FACTIBILIDAD ECONÓMICA, TÉCNICA Y OPERATIVA | 2014-06-05 A | 2014-06-05 → 2014-06-10 (+5d) |  |  | 105d → 82.75d |  | constraint start no earlier than 2014-06-05 → none |
| 64 | Armar Plan General de Proyecto | 2014-06-06 A | 2014-07-09 → 2014-08-12 (+34d) | 24d → 19d |  | 80d → 56.75d | 24, 26, 28, 30, 32, 34 → 24, 26, 28, 30, 32, 34, 62 | constraint finish no earlier than 2014-07-09 → finish no earlier than 2014-06-11 |
| 65 | PLAN GENERAL DE PROYECTO | 2014-07-10 → 2014-08-12 (+33d) | 2014-07-10 → 2014-08-12 (+33d) |  |  | 80d → 56.75d |  | constraint start no earlier than 2014-07-10 → finish no earlier than 2014-07-03 |
| 69 | Armar Poster |  |  |  |  |  |  | was named Confeccionar Poster |
| 73 | Armar Diapositivas |  |  |  |  |  |  | was named Realizar Diapositivas |
| 74 | Armar folletería, carpetas y/o material de apoyo |  |  |  |  |  |  | was named Preparar folletería, carpetas y/o material de apoyo |

## Version 4 (saved 2014-07-06, file (03-07-14)Proyecto_final.mpp)

Note of the change: Merge branch 'develop' of github.com:fos-alex/estamos-para-ayudarlo into develop

Last finish stays 2014-10-30. Complete tasks 3 → 6.

Added:

| ID | Task | Duration | Start | Finish | Predecessors | Constraint | Resources |
| --- | --- | --- | --- | --- | --- | --- | --- |
| 61 | Especifar caso de uso consultar informacion de producto | 7d | 2014-06-24 | 2014-07-02 |  | start no earlier than 2014-06-24 | Analista Funcional Ssr |
| 62 | CASO DE USO CONSULTAR INFORMACION DE PRODUCTO | 0d | 2014-07-03 | 2014-07-03 | 61 | start no earlier than 2014-07-03 | Analista Funcional Ssr; Project Manager |

Removed: 45 Especificar caso de uso Login Mobile/Facebook; 46 CASO DE USO LOGIN MOBILE; 89 Especificar caso de uso Login Web; 94 Especificar caso de uso Productos; 99 Especificar caso de uso Promociones; 105 Especificar caso de uso Mapas; 118 Especificar caso de uso Login Mobile/Facebook; 127 Especificar caso de uso Listas de compras; 135 Especificar caso de uso compras; 149 Especificar caso de uso navegacion; 157 Especificar caso de uso notificaciones; 164 Especificar casos de uso estadisticas; 173 Especificar caso de uso Gestion de mapas; 180 Especifar casos de uso operación por voz

Changed:

| ID | Task | Start | Finish | Duration | Complete | Total float | Predecessors | Other |
| --- | --- | --- | --- | --- | --- | --- | --- | --- |
| 1 | **E.P.A Estamos Para Ayudarlo** |  |  | 145d? → 145d |  |  |  |  |
| 8 | Definir grupo de trabajo |  |  |  |  | 1d → 121d |  | was named Armar grupo de trabajo |
| 11 | Crear Logo del Proyecto |  |  |  |  |  |  | was named Crear Logo de la Proyecto |
| 14 | ACTA DE PROYECTO |  | 2014-05-15 A | 1d → 0d | 0% → 100% | 82.75d → none |  |  |
| 21 | **Analisis** |  | 2014-08-12 → 2014-07-10 (-33d) | 67.25d? → 45d |  | 56.75d → 79d |  |  |
| 23 | Confeccionar WBS |  |  |  |  |  |  | was named Armar WBS |
| 31 | Analizar Riesgos Potenciales |  | 2014-06-04 → 2014-05-28 (-7d) | 13.25d → 9d |  | 105.75d → 110d |  |  |
| 33 | Elaborar informe de Estimacion de Costos |  |  | 8.25d → 9d |  | 82.75d → 110d |  | was named Armar informe de Estimacion de Costos |
| 34 | ESTIMACIÓN DE COSTOS |  | 2014-05-28 → 2014-05-29 A (+1d) |  | 0% → 100% | 82.75d → none |  |  |
| 35 | Efectuar estudio de Factibiliad Técnica, Operativa y Económica | 2014-05-23 A → 2014-05-30 A (+7d) | 2014-06-10 → 2014-06-04 (-6d) | 9d → 4d |  | 56.75d → 105d |  |  |
| 36 | DOCUMENTO DE FACTIBILIDAD ECONÓMICA, TÉCNICA Y OPERATIVA |  | 2014-06-10 → 2014-06-05 A (-5d) |  | 0% → 100% | 82.75d → none |  | constraint none → finish no earlier than 2014-06-05 |
| 37 | Especificar caso de uso Ingresar al sistema | 2014-06-10 → 2014-07-01 (+21d) | 2014-06-11 → 2014-07-02 (+21d) | 1d? → 2d |  | 56.75d → 81d | 36 → none | was named Especificar caso de uso Login Web; constraint none → start no earlier than 2014-07-01; resources none → Analista Funcional Ssr |
| 38 | CASO DE USO INGRESAR AL SISTEMA | 2014-06-11 → 2014-07-03 (+22d) | 2014-06-12 → 2014-07-03 (+21d) | 1d? → 0d |  | 56.75d → 81d |  | was named CASO DE USO LOGIN WEB; constraint none → start no earlier than 2014-07-03; resources none → Analista Funcional Ssr; Project Manager |
| 39 | Especificar caso de uso Productos | 2014-06-12 → 2014-06-25 (+13d) | 2014-06-13 → 2014-07-02 (+19d) | 1d? → 6d |  | 56.75d → 81d | 38 → none | constraint none → start no earlier than 2014-06-25; resources none → Analista Funcional Ssr |
| 40 | CASO DE USO ABM PRODUCTOS | 2014-06-13 → 2014-07-03 (+20d) | 2014-06-16 → 2014-07-03 (+17d) | 1d? → 0d |  | 56.75d → 81d |  | constraint none → start no earlier than 2014-07-03; resources none → Analista Funcional Ssr; Project Manager |
| 41 | Especificar caso de uso Promociones | 2014-06-16 → 2014-06-30 (+14d) | 2014-06-17 → 2014-07-02 (+15d) | 1d? → 3d |  | 56.75d → 81d | 40 → none | constraint none → start no earlier than 2014-06-30; resources none → Analista Funcional Ssr |
| 42 | CASO DE USO ABM PROMOCIONES | 2014-06-17 → 2014-07-03 (+16d) | 2014-06-18 → 2014-07-03 (+15d) | 1d? → 0d |  | 56.75d → 81d |  | constraint none → start no earlier than 2014-07-03; resources none → Analista Funcional Ssr; Project Manager |
| 43 | Especificar caso de uso Mapas | 2014-06-18 → 2014-06-26 (+8d) | 2014-06-19 → 2014-07-02 (+13d) | 1d? → 5d |  | 56.75d → 81d | 42 → none | constraint none → start no earlier than 2014-06-26; resources none → Analista Funcional Ssr |
| 44 | CASO DE USO ABM MAPAS | 2014-06-19 → 2014-07-03 (+14d) | 2014-06-20 → 2014-07-03 (+13d) | 1d? → 0d |  | 56.75d → 81d |  | was named CASO DE USO MAPAS; constraint none → start no earlier than 2014-07-03; resources none → Analista Funcional Ssr; Project Manager |
| 45 | Especificar caso de uso Listas de compras | 2014-06-24 → 2014-06-27 (+3d) | 2014-06-25 → 2014-07-02 (+7d) | 1d? → 4d |  | 56.75d → 81d | CASO DE USO LOGIN MOBILE → none | constraint none → start no earlier than 2014-06-27; resources none → Analista Funcional Ssr |
| 46 | CASO DE USO ABM LISTAS DE COMPRAS | 2014-06-25 → 2014-07-03 (+8d) | 2014-06-26 → 2014-07-03 (+7d) | 1d? → 0d |  | 56.75d → 81d |  | constraint none → start no earlier than 2014-07-03; resources none → Analista Funcional Ssr; Project Manager |
| 47 | Especificar caso de uso compartir Listas de compras | 2014-06-26 → 2014-06-30 (+4d) | 2014-06-27 → 2014-07-02 (+5d) | 1d? → 3d |  | 56.75d → 81d | 46 → none | constraint none → finish no earlier than 2014-07-02; resources none → Analista Funcional Ssr |
| 48 | CASO DE USO COMPARTIR LISTAS DE COMPRAS | 2014-06-27 → 2014-07-03 (+6d) | 2014-06-30 → 2014-07-03 (+3d) | 1d? → 0d |  | 56.75d → 81d |  | constraint none → start no earlier than 2014-07-03; resources none → Analista Funcional Ssr; Project Manager |
| 49 | Especificar caso de uso compras | 2014-06-30 → 2014-06-20 (-10d) | 2014-07-01 → 2014-07-02 (+1d) | 1d? → 9d |  | 56.75d → 81d | 48 → none | constraint none → start no earlier than 2014-06-20; resources none → Analista Funcional Ssr |
| 50 | CASO DE USO COMPRAR | 2014-07-01 → 2014-07-03 (+2d) | 2014-07-02 → 2014-07-03 (+1d) | 1d? → 0d |  | 56.75d → 81d |  | constraint none → start no earlier than 2014-07-03; resources none → Analista Funcional Ssr; Project Manager |
| 51 | Especificar caso de uso recorrer supermercado | 2014-07-02 → 2014-06-23 (-9d) | 2014-07-03 → 2014-07-02 (-1d) | 1d? → 8d |  | 56.75d → 81d | 50 → none | was named Especificar caso de uso navegacion; constraint none → start no earlier than 2014-06-23; resources none → Analista Funcional Ssr |
| 52 | CASO DE USO RECORRER SUPERMERCADO |  | 2014-07-04 → 2014-07-03 (-1d) | 1d? → 0d |  | 56.75d → 81d |  | was named CASO DE USO NAVEGAR; constraint none → start no earlier than 2014-07-03; resources none → Analista Funcional Ssr; Project Manager |
| 53 | Especificar caso de uso notificacionar cercania a supermercado | 2014-07-04 → 2014-06-25 (-9d) | 2014-07-07 → 2014-07-02 (-5d) | 1d? → 6d |  | 56.75d → 81d | 52 → none | was named Especificar caso de uso notificaciones; constraint none → start no earlier than 2014-06-25; resources none → Analista Funcional Ssr |
| 54 | CASO DE USO NOTIFICAR CERCANIA A SUPERMERCADO | 2014-07-07 → 2014-07-03 (-4d) | 2014-07-08 → 2014-07-03 (-5d) | 1d? → 0d |  | 56.75d → 81d |  | was named CASO DE USO NOTIFICACIONES; constraint none → start no earlier than 2014-07-03; resources none → Analista Funcional Ssr; Project Manager |
| 55 | Especificar caso de uso Gestion de mapas | 2014-07-08 → 2014-06-23 (-15d) | 2014-07-09 → 2014-07-02 (-7d) | 1d? → 8d |  | 56.75d → 81d | 54 → none | constraint none → start no earlier than 2014-06-23; resources none → Analista Funcional Ssr |
| 56 | CASO DE USO GESTIONAR MAPAS | 2014-07-09 → 2014-07-03 (-6d) | 2014-07-10 → 2014-07-03 (-7d) | 1d? → 0d |  | 56.75d → 81d |  | constraint none → start no earlier than 2014-07-03; resources none → Analista Funcional Ssr; Project Manager |
| 57 | Especificar casos de uso estadisticas | 2014-07-10 → 2014-06-30 (-10d) | 2014-07-11 → 2014-07-02 (-9d) | 1d? → 3d |  | 56.75d → 81d | 56 → none | constraint none → start no earlier than 2014-06-30; resources none → Analista Funcional Ssr |
| 58 | CASO DE USO MOSTRAR ESTADISTICAS | 2014-07-11 → 2014-07-03 (-8d) | 2014-07-14 → 2014-07-03 (-11d) | 1d? → 0d |  | 56.75d → 81d |  | constraint none → start no earlier than 2014-07-03; resources none → Analista Funcional Ssr; Project Manager |
| 59 | Especifar caso de uso activar modo de uso por voz | 2014-07-14 → 2014-06-27 (-17d) | 2014-07-15 → 2014-07-02 (-13d) | 1d? → 4d |  | 56.75d → 81d | 58 → none | was named Especifar casos de uso operación por voz; constraint none → start no earlier than 2014-06-27; resources none → Analista Funcional Ssr |
| 60 | CASO DE USO ACTIVAR MODO DE USO POR VOZ | 2014-07-15 → 2014-07-03 (-12d) | 2014-07-16 → 2014-07-03 (-13d) | 1d? → 0d |  | 56.75d → 81d |  | was named CASO DE USO MODOS DE OPERACIÓN; constraint none → start no earlier than 2014-07-03; resources none → Analista Funcional Ssr; Project Manager |
| 63 | Elaborar Plan General de Proyecto | 2014-06-06 A → 2014-07-04 A (+28d) | 2014-08-12 → 2014-07-09 (-34d) | 19d → 4d |  | 56.75d → 80d | 24, 26, 28, 30, 32, 34, 60 → 62, 60, 58, 56, 54, 52, 50, 48, 46, 44, 42, 40, 38, 36, 34, 32, 30, 28, 26 | was named Armar Plan General de Proyecto; constraint finish no earlier than 2014-06-11 → finish no earlier than 2014-07-09 |
| 64 | PLAN GENERAL DE PROYECTO | 2014-08-12 → 2014-07-10 (-33d) | 2014-08-12 → 2014-07-10 (-33d) |  |  | 56.75d → 79d |  | constraint finish no earlier than 2014-07-03 → finish no earlier than 2014-07-10 |
| 80 | Realizar DER |  | 2014-10-10 → 2014-07-02 (-100d) | 89d → 17d |  | 13d → 82d |  | constraint finish no earlier than 2014-10-10 → finish no earlier than 2014-07-02 |
| 81 | DER | 2014-10-16 → 2014-07-03 (-105d) | 2014-10-16 → 2014-07-03 (-105d) |  |  | 9d → 81d |  | constraint finish no earlier than 2014-10-16 → finish no earlier than 2014-07-03 |
| 82 | Realizar Diccionario de Datos | 2014-10-06 → 2014-07-04 (-94d) | 2014-10-15 → 2014-07-08 (-99d) | 8d → 3d |  | 10d → 81d | none → 81 | constraint start no earlier than 2014-10-06 → finish no earlier than 2014-07-08 |
| 83 | DICCIONARIO DE DATOS | 2014-10-16 → 2014-07-09 (-99d) | 2014-10-16 → 2014-07-09 (-99d) |  |  | 9d → 80d |  | constraint finish no earlier than 2014-10-16 → finish no earlier than 2014-07-09 |
| 84 | Realizar Diagrama de Clases | 2014-06-10 → 2014-06-17 (+7d) | 2014-10-10 → 2014-07-08 (-94d) | 89d → 16d |  | 13d → 81d |  | constraint finish no earlier than 2014-10-10 → finish no earlier than 2014-07-08 |
| 85 | DIAGRAMA DE CLASES | 2014-10-16 → 2014-07-09 (-99d) | 2014-10-16 → 2014-07-09 (-99d) |  |  | 10d → 81d |  | constraint start no earlier than 2014-10-16 → start no earlier than 2014-07-09 |
| 86 | **Desarrollo Web** | 2014-05-29 → 2014-05-30 (+1d) |  | 33d → 32d |  |  |  |  |
| 87 | **Login Web** | 2014-05-29 → 2014-05-30 (+1d) |  | 6d → 5d |  |  |  |  |
| 91 | **Modulo Productos** | 2014-06-02 → 2014-06-04 (+2d) |  | 14d → 12d |  |  |  |  |
| 95 | **Modulo Promociones** | 2014-06-05 → 2014-06-09 (+4d) |  | 11d → 9d |  |  |  |  |
| 99 | **Modulo Mapas** | 2014-06-09 → 2014-06-13 (+4d) |  | 26d → 22d |  |  |  |  |
| 101 | Desarrollar ABM Mapas |  |  |  |  |  | Especificar caso de uso Mapas → none |  |
| 112 | **Login Mobile** | 2014-06-09 → 2014-06-20 (+11d) |  | 24d → 15d |  |  |  |  |
| 113 | Desarrollar Login Mobile |  |  |  |  |  | Especificar caso de uso Login Mobile/Facebook → none |  |
| 120 | **Modulo Listas de Compras** | 2014-06-26 → 2014-07-11 (+15d) |  | 27d → 16d |  |  |  |  |
| 121 | Desarrollar ABM Listas de compras |  |  |  |  |  | Especificar caso de uso Listas de compras → none | was named Desarrollar ABM Listas |
| 126 | ABM LISTAS DE COMPRAS |  |  |  |  |  |  | was named ABM LISTAS |
| 127 | **Modulo Compras** | 2014-07-07 → 2014-07-14 (+7d) |  | 25d → 20d |  |  |  |  |
| 128 | Modo compras |  |  |  |  |  | Especificar caso de uso compras → none |  |
| 140 | **Modulo Recorrer Supermercado** | 2014-07-23 → 2014-08-04 (+12d) |  | 23d → 15d |  |  |  | was named Modulo Navegación |
| 141 | Recorrido de compras |  |  |  |  |  | Especificar caso de uso navegacion → none |  |
| 146 | MODULO RECORRER SUPERMERCADO |  |  |  |  |  |  | was named MODULO NAVEGACION |
| 147 | **Modulo Notificaciones** | 2014-08-04 → 2014-08-13 (+9d) |  | 19d → 12d |  |  |  |  |
| 153 | **Modulo Estadísticas** | 2014-08-18 → 2014-08-26 (+8d) |  | 29d → 23d |  |  |  |  |
| 155 | Desarrollar Historial de Productos |  |  |  |  |  | Especificar casos de uso estadisticas → none |  |
| 157 | ESTADISTICAS DE PRODUCTOS |  |  |  |  |  |  | was named HISTORIAL DE PRODUCTOS |
| 160 | ESTADISTICAS DE PRECIOS |  |  |  |  |  |  | was named HISTORIAL DE PRECIOS |
| 161 | **Gestion de mapas** | 2014-08-18 → 2014-08-29 (+11d) |  | 23d → 14d |  |  |  |  |
| 162 | Descargar mapa |  |  |  |  |  | Especificar caso de uso Gestion de mapas → none |  |
| 163 | Actualizar mapa |  |  |  |  |  | Especificar caso de uso Gestion de mapas → none |  |
| 164 | Borrar mapa |  |  |  |  |  | Especificar caso de uso Gestion de mapas → none |  |
| 167 | **Modulo Operacion por voz** | 2014-09-15 → 2014-09-22 (+7d) |  | 30d → 25d |  |  |  |  |
| 192 | Realizar documento de Lecciones Aprendidas |  |  |  |  |  |  | was named Armar documento de Lecciones Aprendidas |

## Version 5 (saved 2014-11-01, file GANTT-Entrega final 1-11.mpp)

Note of the change: Merge branch 'develop' of github.com:fos-alex/estamos-para-ayudarlo into removed-facebook-connect

Last finish 2014-10-30 → 2014-11-04 (+5d). Complete tasks 6 → 5.

Removed: 163 Actualizar mapa; 164 Borrar mapa; 172 Listas por voz; 173 Testing; 175 Gestion TAGS; 176 Administrar TAGS supermercados; 177 Testing

Changed:

| ID | Task | Start | Finish | Duration | Complete | Total float | Predecessors | Other |
| --- | --- | --- | --- | --- | --- | --- | --- | --- |
| 1 | **E.P.A Estamos Para Ayudarlo** |  | 2014-10-30 → 2014-11-04 (+5d) | 145d → 149d |  |  |  |  |
| 5 | Desarrollo propuesta E.P.A |  |  |  |  | 121d → 104d |  | was named Desarrollo propuesta aceptada |
| 6 | PRESENTACIÓN DE E.P.A |  |  |  |  | 120.25d → 103.25d |  | was named PRESENTACIÓN DE PROPUESTA ACEPTADA |
| 8 | Definir técnología |  |  |  |  | 121d → 111d |  | was named Definir grupo de trabajo |
| 9 | Definir Nicho de mercado |  |  |  |  | 120d → 103d |  | was named Definir nombre de empresa y proyecto |
| 12 | Precisar Objetivos, Alcance y funcionalidades |  | 2014-05-02 → 2014-05-01 (-1d) | 5d → 4d |  | 120d → 103d |  | was named Precisar Objetivos, Alcance y Límites; constraint finish no earlier than 2014-05-02 → finish no earlier than 2014-05-01 |
| 13 | Confeccionar Acta de Proyecto |  | 2014-05-13 → 2014-05-08 (-5d) | 12d → 9d |  | 121d → 111d |  | constraint finish no earlier than 2014-05-13 → finish no earlier than 2014-05-08 |
| 14 | ACTA DE PROYECTO | 2014-05-15 A → 2014-05-08 A (-7d) | 2014-05-15 A → 2014-05-08 A (-7d) |  |  |  |  |  |
| 15 | Elaborar informe de Estimacion de Costos | 2014-05-16 A → 2014-05-09 (-7d) | 2014-05-28 → 2014-05-14 (-14d) | 9d → 4d |  | 110d → 111d | 14 → 13 | constraint finish no earlier than 2014-05-21 → start no earlier than 2014-05-09 |
| 16 | ESTIMACIÓN DE COSTOS | 2014-05-22 A → 2014-05-15 (-7d) | 2014-05-29 A → 2014-05-15 (-14d) |  | 100% → 0% | none → 111d |  | constraint none → start no earlier than 2014-05-15 |
| 17 | Estimar tiempos y tareas | 2014-05-05 → 2014-05-02 (-3d) | 2014-05-08 → 2014-05-07 (-1d) |  |  | 120d → 103d |  | constraint none → start no earlier than 2014-05-01 |
| 18 | Confeccionar Gantt | 2014-05-09 → 2014-05-08 (-1d) | 2014-05-14 → 2014-05-15 (+1d) | 4d → 6d |  | 120d → 103d |  | constraint start no earlier than 2014-05-08 → finish no earlier than 2014-05-14 |
| 19 | GANTT |  |  |  |  | 120d → 103d |  | constraint start no earlier than 2014-05-15 → finish no earlier than 2014-05-15 |
| 20 | **Relevamiento** |  | 2014-05-29 → 2014-06-12 (+14d) | 10d → 20d |  | 109d → 103d |  |  |
| 21 | Realizar Informe de Estudio de Mercado |  | 2014-05-28 → 2014-06-12 (+15d) | 9d → 20d |  | 110d → 103d | 14 → 19 | constraint finish no earlier than 2014-05-21 → finish no earlier than 2014-06-11 |
| 22 | INFORME DE ESTUDIO DE MERCADO | 2014-05-29 → 2014-06-12 (+14d) | 2014-05-29 → 2014-06-12 (+14d) |  |  | 109d → 103d |  | constraint finish no earlier than 2014-05-29 → start no earlier than 2014-06-12 |
| 24 | Realizar Plan de Ejecución - Entregables |  |  |  |  |  | none → 14 |  |
| 25 | Confeccionar WBS | 2014-05-21 A → 2014-05-13 A (-8d) | 2014-05-28 → 2014-05-20 (-8d) |  |  | 21d → 22d | none → 24 |  |
| 35 | Efectuar estudio de Factibiliad Técnica, Operativa y Económica |  |  |  |  | 105d → 109d | 16 → 14 |  |
| 37 | Especificar caso de uso Ingresar al sistema |  |  |  |  | 81d → 85d | none → 7 |  |
| 39 | Especificar caso de uso Productos |  |  |  |  | 81d → 85d | none → 7 |  |
| 41 | Especificar caso de uso Promociones |  |  |  |  | 81d → 85d | none → 7 |  |
| 43 | Especificar caso de uso Mapas |  |  |  |  | 81d → 85d | none → 7 |  |
| 45 | Especificar caso de uso Listas de compras |  |  |  |  | 81d → 85d | none → 7 |  |
| 47 | Especificar caso de uso compartir Listas de compras |  |  |  |  | 81d → 85d | none → 7 |  |
| 49 | Especificar caso de uso compras |  |  |  |  | 81d → 85d | none → 7 |  |
| 51 | Especificar caso de uso recorrer supermercado |  |  |  |  | 81d → 85d | none → 7 |  |
| 53 | Especificar caso de uso notificacionar cercania a supermercado |  |  |  |  | 81d → 85d | none → 7 |  |
| 55 | Especificar caso de uso Gestion de mapas |  |  |  |  | 81d → 85d | none → 7 |  |
| 57 | Especificar casos de uso estadisticas |  |  |  |  | 81d → 85d | none → 7 |  |
| 59 | Especifar caso de uso activar modo de uso por voz |  |  |  |  | 81d → 85d | none → 7 |  |
| 61 | Especifar caso de uso consultar informacion de producto |  |  |  |  | 81d → 85d | none → 7 |  |
| 63 | Elaborar Plan General de Proyecto |  |  |  |  | 80d → 84d | 62, 60, 58, 56, 54, 52, 50, 48, 46, 44, 42, 40, 38, 36, 16, 34, 32, 30, 28 → 62, 60, 58, 56, 54, 52, 50, 48, 46, 44, 42, 40, 38, 36, 34, 32, 30, 28 |  |
| 76 | **Ejecucion del Proyecto** |  | 2014-10-27 → 2014-11-04 (+8d) | 107d → 114d |  | 3d → 0d |  |  |
| 77 | **Diseño y Desarrollo** |  | 2014-10-27 → 2014-11-04 (+8d) | 107d → 114d |  | 3d → 0d |  |  |
| 86 | **Desarrollo Web** |  | 2014-07-14 → 2014-10-15 (+93d) | 32d → 99d |  | 77d → 14d |  |  |
| 99 | **Modulo Mapas** | 2014-06-13 → 2014-06-20 (+7d) | 2014-07-14 → 2014-10-15 (+93d) | 22d → 84d |  | 77d → 0d |  |  |
| 101 | Desarrollar ABM Mapas | 2014-06-13 → 2014-06-25 (+12d) | 2014-06-27 → 2014-09-30 (+95d) | 11d → 70d |  | 88d → 0d | none → 100 | constraint finish no earlier than 2014-06-27 → start no earlier than 2014-06-24 |
| 102 | Testing | 2014-06-24 → 2014-10-01 (+99d) | 2014-06-27 → 2014-10-06 (+101d) |  |  | 83d → 0d | none → 101 |  |
| 103 | ABM MAPAS | 2014-06-30 → 2014-10-06 (+98d) | 2014-06-30 → 2014-10-06 (+98d) |  |  | 82d → 0d |  |  |
| 104 | Asignar Productos a Mapas | 2014-07-07 → 2014-10-07 (+92d) | 2014-07-11 → 2014-10-13 (+94d) |  |  | 78d → 0d |  |  |
| 105 | Testing | 2014-07-10 → 2014-10-14 (+96d) | 2014-07-11 → 2014-10-15 (+96d) |  |  | 78d → 0d | none → 104 |  |
| 106 | MAPA CON PRODUCTOS | 2014-07-14 → 2014-10-15 (+93d) | 2014-07-14 → 2014-10-15 (+93d) |  |  | 77d → 0d |  |  |
| 107 | **Desarrollo Mobile** |  | 2014-10-27 → 2014-11-04 (+8d) | 103d → 110d |  | 3d → 0d |  |  |
| 112 | **Login Mobile** | 2014-06-20 → 2014-07-14 (+24d) | 2014-07-10 → 2014-07-31 (+21d) | 15d → 14d |  | 79d → 68d |  |  |
| 113 | Desarrollar Login Mobile | 2014-06-20 → 2014-07-14 (+24d) | 2014-06-26 → 2014-07-18 (+22d) |  |  | 88d → 68d | none → 111 |  |
| 114 | Testing | 2014-06-27 → 2014-07-21 (+24d) | 2014-06-27 → 2014-07-21 (+24d) |  |  | 88d → 68d |  |  |
| 115 | LOGIN MOBILE | 2014-06-30 → 2014-07-21 (+21d) | 2014-06-30 → 2014-07-21 (+21d) |  |  | 87d → 68d |  |  |
| 116 | Investigar Login Facebook | 2014-06-30 → 2014-07-22 (+22d) | 2014-07-02 → 2014-07-24 (+22d) |  |  | 80d → 68d | none → 115 |  |
| 117 | Desarrollar Login Facebook | 2014-07-03 → 2014-07-25 (+22d) | 2014-07-08 → 2014-07-30 (+22d) |  |  | 80d → 68d |  |  |
| 118 | Testing | 2014-07-09 → 2014-07-31 (+22d) | 2014-07-09 → 2014-07-31 (+22d) |  |  | 80d → 68d |  |  |
| 119 | LOGIN FACEBOOK | 2014-07-10 → 2014-07-31 (+21d) | 2014-07-10 → 2014-07-31 (+21d) |  |  | 79d → 68d |  |  |
| 120 | **Modulo Listas de Compras** |  | 2014-08-01 → 2014-08-04 (+3d) | 16d → 17d |  | 63d → 48d |  |  |
| 124 | Listas recurrentes | 2014-07-28 → 2014-07-30 (+2d) | 2014-07-30 → 2014-08-01 (+2d) |  |  | 64d → 43d |  | constraint finish no earlier than 2014-07-30 → finish no earlier than 2014-08-01 |
| 125 | Testing | 2014-07-31 → 2014-08-04 (+4d) | 2014-07-31 → 2014-08-04 (+4d) |  |  | 64d → 43d |  |  |
| 126 | ABM LISTAS DE COMPRAS | 2014-08-01 → 2014-08-04 (+3d) | 2014-08-01 → 2014-08-04 (+3d) |  |  | 63d → 43d |  |  |
| 127 | **Modulo Compras** | 2014-07-14 → 2014-08-05 (+22d) | 2014-08-11 → 2014-09-09 (+29d) | 20d → 26d |  | 58d → 40d |  |  |
| 128 | Modo compras | 2014-07-14 → 2014-08-05 (+22d) | 2014-07-17 → 2014-08-08 (+22d) |  |  | 68d → 43d | none → 126 |  |
| 129 | Compra on-demand | 2014-07-18 → 2014-08-11 (+24d) | 2014-07-21 → 2014-08-12 (+22d) |  |  | 68d → 43d |  |  |
| 130 | Precios cuidados | 2014-07-22 → 2014-08-13 (+22d) | 2014-07-25 → 2014-08-18 (+24d) |  |  | 68d → 43d |  |  |
| 131 | Testing | 2014-07-25 → 2014-08-19 (+25d) | 2014-07-28 → 2014-08-20 (+23d) |  |  | 67d → 43d | none → 130 |  |
| 132 | Investigar lectura QR | 2014-07-25 → 2014-08-26 (+32d) | 2014-07-28 → 2014-08-27 (+30d) |  |  | 63d → 40d | none → 131 | constraint finish no earlier than 2014-07-28 → finish no earlier than 2014-08-27 |
| 133 | Desarollar Lector de productos QR | 2014-07-29 → 2014-08-28 (+30d) | 2014-07-31 → 2014-09-04 (+35d) | 3d → 6d |  | 63d → 40d |  |  |
| 134 | Testing | 2014-08-01 → 2014-09-05 (+35d) | 2014-08-01 → 2014-09-09 (+39d) | 1d → 3d |  | 63d → 40d |  |  |
| 135 | LECTOR DE PRODUCTOS QR | 2014-08-04 → 2014-09-09 (+36d) | 2014-08-04 → 2014-09-09 (+36d) |  |  | 63d → 40d |  |  |
| 136 | Investigar lectura NFC | 2014-08-01 → 2014-08-05 (+4d) | 2014-08-04 → 2014-08-06 (+2d) |  |  | 58d → 52d | none → 126 |  |
| 137 | Desarollar Lector de productos NFC | 2014-08-05 → 2014-08-07 (+2d) | 2014-08-07 → 2014-08-14 (+7d) | 3d → 6d |  | 58d → 52d |  |  |
| 138 | Testing | 2014-08-08 → 2014-08-15 (+7d) | 2014-08-08 → 2014-08-19 (+11d) | 1d → 3d |  | 58d → 52d |  |  |
| 139 | LECTOR DE PRODUCTOS NFC | 2014-08-11 → 2014-08-19 (+8d) | 2014-08-11 → 2014-08-19 (+8d) |  |  | 58d → 52d |  |  |
| 140 | GESTION TAGS | 2014-10-27 → 2014-08-20 (-68d) | 2014-10-27 → 2014-08-22 (-66d) | 0d → 3d |  | 3d → 52d | Testing → 139 | constraint start no earlier than 2014-10-27 → none |

| ID | Task | Start | Finish | Duration | Total float | Predecessors | Other |
| --- | --- | --- | --- | --- | --- | --- | --- |
| 141 | **Modulo Recorrer Supermercado** | 2014-08-04 → 2014-10-16 (+73d) | 2014-08-25 → 2014-11-04 (+71d) | 15d → 14d | 48d → 0d |  |  |
| 142 | Recorrido de compras | 2014-08-04 → 2014-10-16 (+73d) | 2014-08-08 → 2014-10-22 (+75d) |  | 49d → 0d | none → 99 |  |
| 143 | Navegación a producto/categoría | 2014-08-11 → 2014-10-23 (+73d) | 2014-08-13 → 2014-10-27 (+75d) |  | 49d → 0d |  |  |
| 144 | Localizacion de usuario | 2014-08-14 → 2014-10-28 (+75d) | 2014-08-18 → 2014-10-30 (+73d) |  | 49d → 0d |  |  |
| 145 | Modificacion online recorrido | 2014-08-19 → 2014-10-31 (+73d) | 2014-08-21 → 2014-11-04 (+75d) |  | 49d → 0d |  |  |
| 146 | Testing | 2014-08-14 → 2014-10-23 (+70d) | 2014-08-22 → 2014-10-31 (+70d) |  | 48d → 2d |  |  |
| 147 | MODULO RECORRER SUPERMERCADO | 2014-08-25 → 2014-10-31 (+67d) | 2014-08-25 → 2014-10-31 (+67d) |  | 48d → 2d |  |  |
| 162 | **Gestion de mapas** | 2014-08-29 → 2014-08-25 (-4d) |  | 14d → 18d | 30d → 34d |  |  |
| 163 | Descargar/Actualizar mapa | 2014-08-29 → 2014-08-25 (-4d) |  | 6d → 10d |  |  | was named Descargar mapa |
| 164 | Testing | 2014-09-08 → 2014-09-12 (+4d) |  | 8d → 4d | 30d → 34d | none → 163 |  |
| 166 | **Modulo Operacion por voz** |  | 2014-10-27 → 2014-10-31 (+4d) | 25d → 30d | 3d → 2d |  |  |
| 169 | Acceso y Navegación por voz |  | 2014-10-10 → 2014-10-24 (+14d) | 10d → 20d | 13d → 2d |  | was named Compras por voz; constraint finish no earlier than 2014-10-10 → finish no earlier than 2014-10-20 |
| 170 | Testing | 2014-10-06 → 2014-10-27 (+21d) | 2014-10-13 → 2014-10-31 (+18d) | 6d → 5d | 12d → 2d | none → 169 | constraint finish no earlier than 2014-10-13 → finish no earlier than 2014-10-31 |
| 171 | OPERACIÓN POR VOZ | 2014-10-27 → 2014-10-31 (+4d) | 2014-10-27 → 2014-10-31 (+4d) |  | 3d → 2d | none → 170 |  |
